# PSF SINK DEMO

Schedule from MS Project, 2020-07-15 to 2020-10-08, A marks actual dates.
Microchip Technology

## Calendars

- Standard: Mon-Fri 08:00-12:00, 13:00-17:00; Sat-Sun off.

## Schedule

| ID | WBS | Task | Type | Duration | Start | Finish | Predecessors | Complete | Remaining | Baseline start | Baseline finish | Baseline duration | Total slack |
| --- | --- | --- | --- | --- | --- | --- | --- | --- | --- | --- | --- | --- | --- |
| 1 | 1 | **AE SINK Demo** |  | 62d | 2020-07-15 A | 2020-10-08 |  | 25% | 46.5d | 2020-07-15 | 2020-09-09 | 41d | 0d |
| 2 | 1.1 | **Devlopment** |  | 52d | 2020-07-15 A | 2020-09-24 |  | 30% | 36.59d |  |  |  | 0d |
| 3 | 1.1.1 | Demo signed off |  | 5d | 2020-07-15 A | 2020-07-21 A |  | 100% |  | 2020-07-15 | 2020-07-21 | 5d |  |
| 4 | 1.1.2 | Requirement doc signed off |  | 3d | 2020-07-22 A | 2020-07-24 A | 3 | 100% |  | 2020-07-22 | 2020-07-24 | 3d |  |
| 5 | 1.1.3 | Complete Design doc |  | 5d | 2020-07-27 A | 2020-07-31 A | 4 | 100% |  | 2020-07-27 | 2020-07-31 | 5d |  |
| 6 | 1.1.4 | EVB available for developer | milestone | 0d | 2020-08-14 | 2020-08-14 |  |  |  | 2020-08-04 | 2020-08-04 | 0d | 25d |
| 7 | 1.1.5 | **Complete coding and unit testing** |  | 31d | 2020-08-03 A | 2020-09-14 | 5 | 9% | 28.18d | 2020-08-03 | 2020-08-14 | 10d | 0d |
| 8 | 1.1.5.1 | Complete PCT |  | 25d | 2020-08-03 A | 2020-09-04 |  | 4% | 24d | 2020-08-03 | 2020-08-04 | 2d | 0d |
| 9 | 1.1.5.2 | Complete ADC |  | 2d | 2020-09-07 | 2020-09-08 | 8 |  |  | 2020-08-05 | 2020-08-06 | 2d | 0d |
| 10 | 1.1.5.3 | Integrate with PSF |  | 2d | 2020-08-07 A | 2020-08-10 A | 9 | 100% |  | 2020-08-07 | 2020-08-10 | 2d |  |
| 11 | 1.1.5.4 | Reconfigure as per board |  | 1d | 2020-09-09 | 2020-09-09 | 10, 9 |  |  | 2020-08-11 | 2020-08-11 | 1d | 0d |
| 12 | 1.1.5.5 | Unit test and fix |  | 3d | 2020-09-10 | 2020-09-14 | 11 |  |  | 2020-08-12 | 2020-08-14 | 3d | 0d |
| 13 | 1.1.6 | **Developer testing** |  | 3d | 2020-09-15 | 2020-09-17 | 7 |  |  | 2020-08-17 | 2020-08-19 | 3d | 0d |
| 14 | 1.1.6.1 | Complete test plan |  | 0.5d | 2020-09-15 | 2020-09-15 | 12 |  |  | 2020-08-17 | 2020-08-17 | 0.5d | 0d |
| 15 | 1.1.6.2 | Code review and fix |  | 0.5d | 2020-09-15 | 2020-09-15 | 14 |  |  | 2020-08-17 | 2020-08-17 | 0.5d | 0d |
| 16 | 1.1.6.3 | Retest and regression |  | 2d | 2020-09-16 | 2020-09-17 | 15 |  |  | 2020-08-18 | 2020-08-19 | 2d | 0d |
| 17 | 1.1.7 | **Release beta firmware** |  | 2d | 2020-09-18 | 2020-09-21 | 13, 6 |  |  | 2020-08-20 | 2020-08-21 | 2d | 0d |
| 18 | 1.1.7.1 | Preprae release collaterals |  | 1d | 2020-09-18 | 2020-09-18 | 16 |  |  | 2020-08-20 | 2020-08-20 | 1d | 0d |
| 19 | 1.1.7.2 | Review and fix |  | 1d | 2020-09-21 | 2020-09-21 | 18 |  |  | 2020-08-21 | 2020-08-21 | 1d | 0d |
| 20 | 1.1.8 | Release Rev A quick start guide for review |  | 3d | 2020-09-22 | 2020-09-24 | 17 |  |  | 2020-08-24 | 2020-08-26 | 3d | 0d |
| 21 | 1.2 | Complete quick start guide |  | 10d | 2020-09-25 | 2020-10-08 | 20 |  |  | 2020-08-27 | 2020-09-09 | 10d | 0d |
